# dbv nou

Schedule from MS Project, 2024-06-03 to 2024-12-27, costs in €.

## Calendars

- Standard: Mon-Fri 08:00-12:00, 13:00-17:00; Sat-Sun off.

## Resources

| Resource | Group | Rate |
| --- | --- | --- |
| Andrei Stoica | Full Stack Developer | 17 |
| Radu Dumitrescu | Full Stack Developer | 17 |
| Doana Bogdan | Project Manager | 14 |
| James Smith | Programator Back-End(EN) | 19 |
| Chiara Russo | Programator Back-End(IT) | 17 |
| Cristina Radu | Programator Back-End(RO) | 12 |
| Mihai Popa | Proiectant Baze de date | 12 |
| Marco Moretti | Inginer Securitate(IT) | 17 |
| Ana Stanescu | Project Manager Junior | 12 |
| Samuel Wilson | Testare Aplicatie(EN) | 19 |
| Maria Ionescu | Testare Aplicatie(RO) | 12 |
| Giovanni Rossi | Proiectant UI(IT) | 17 |
| Alexandru Munteanu | Programator Front-End(RO) | 12 |
| Valentino Marino | Programator Front-End(RO) | 17 |
| Elena Vasilescu | UX Designer | 12 |
| Buget Achizitii | Buget Achizitii |  |

## Schedule

| ID | WBS | Task | Duration | Start | Finish | Predecessors | Total slack | Free slack | Resources | Work | Cost |
| --- | --- | --- | --- | --- | --- | --- | --- | --- | --- | --- | --- |
| 1 | 1 | **Activitati de proiect** | 150d | 2024-06-03 | 2024-12-27 |  | 0d |  |  | 3136h | 46,168 |
| 2 | 1.1 | Instalare medii de lucru | 2d | 2024-06-03 | 2024-06-17 |  | 0d |  | Alexandru Munteanu; Ana Stanescu; Andrei Stoica; Chiara Russo; Cristina Radu; Doana Bogdan; Elena Vasilescu; Giovanni Rossi; James Smith; Marco Moretti; Maria Ionescu; Mihai Popa; Radu Dumitrescu; Samuel Wilson; Valentino Marino | 120h | 1,808 |
| 3 | 1.2 | **Discutie cu clientul** | 4d | 2024-06-18 | 2024-06-21 | 2 | 0d |  |  | 64h | 832 |
| 4 | 1.2.1 | Stabilirea functionalitatii aplicatiei | 1d | 2024-06-18 | 2024-06-18 |  | 0d |  | Ana Stanescu; Doana Bogdan | 16h | 208 |
| 5 | 1.2.2 | Prezentarea ofertei | 1d | 2024-06-19 | 2024-06-19 | 4 | 0d |  | Ana Stanescu; Doana Bogdan | 16h | 208 |
| 6 | 1.2.3 | Negocierea cu beneficiarul | 1d | 2024-06-20 | 2024-06-20 | 5 | 0d |  | Ana Stanescu; Doana Bogdan | 16h | 208 |
| 7 | 1.2.4 | Semnarea contractului | 1d | 2024-06-21 | 2024-06-21 | 6 | 0d |  | Ana Stanescu; Doana Bogdan | 16h | 208 |
| 8 | 1.3 | **Analiza aplicatiei** | 5d | 2024-06-26 | 2024-07-02 | 3 | 0d |  |  | 64h | 816 |
| 9 | 1.3.1 | Identificarea solutiilor posibile | 2d | 2024-06-26 | 2024-06-27 |  | 0d |  | Ana Stanescu; Doana Bogdan | 32h | 416 |
| 10 | 1.3.2 | Alegerea solutiilor viabile | 2d | 2024-06-28 | 2024-07-01 | 9 | 0d |  | Ana Stanescu | 16h | 192 |
| 11 | 1.3.3 | Redactarea solutiilor gasite | 1d | 2024-07-02 | 2024-07-02 | 10 | 0d |  | Ana Stanescu; Doana Bogdan | 16h | 208 |
| 12 | 1.4 | **Re-estimarea costurilor proiectului** | 3d | 2024-07-03 | 2024-07-05 | 8 | 0d |  |  | 40h | 528 |
| 13 | 1.4.1 | Resurse umane | 1d | 2024-07-03 | 2024-07-03 |  | 0d |  | Doana Bogdan | 8h | 112 |
| 14 | 1.4.2 | Achizitii | 1d | 2024-07-04 | 2024-07-04 | 13 | 0d |  | Ana Stanescu; Doana Bogdan | 16h | 208 |
| 15 | 1.4.3 | Deplasari | 1d | 2024-07-05 | 2024-07-05 | 14 | 0d |  | Ana Stanescu; Doana Bogdan | 16h | 208 |
| 16 | 1.5 | **Proiectarea baza de date** | 27d | 2024-07-08 | 2024-08-13 | 12 | 96d |  |  | 216h | 2,592 |
| 17 | 1.5.1 | Curs udemy | 1d | 2024-07-08 | 2024-07-08 |  | 96d | 0d | Mihai Popa | 8h | 96 |
| 18 | 1.5.2 | Proiectare nivel conceptual | 2d | 2024-07-09 | 2024-07-10 | 17 | 96d | 0d | Mihai Popa | 16h | 192 |
| 19 | 1.5.3 | Proiectare la nivel logic | 2d | 2024-07-11 | 2024-07-12 | 18 | 96d | 0d | Mihai Popa | 16h | 192 |
| 20 | 1.5.4 | Proiectarea schemei fizice a baze de date | 2d | 2024-07-15 | 2024-07-16 | 19 | 96d | 0d | Mihai Popa | 16h | 192 |
| 21 | 1.5.5 | Rafinare si imbunatatire BD | 3d | 2024-07-17 | 2024-07-19 | 20 | 96d | 0d | Mihai Popa | 24h | 288 |
| 22 | 1.5.6 | **Realizarea bazei de date** | 4d | 2024-07-22 | 2024-07-25 | 21 | 96d | 0d |  | 32h | 384 |
| 23 | 1.5.6.1 | Crearea tabelelor | 2d | 2024-07-22 | 2024-07-23 |  | 96d | 0d | Mihai Popa | 16h | 192 |
| 24 | 1.5.6.2 | Realizarea legaturilor dintre tabele | 2d | 2024-07-24 | 2024-07-25 | 23 | 96d |  | Mihai Popa | 16h | 192 |

| ID | WBS | Task | Duration | Start | Finish | Predecessors | Total slack | Free slack | Resources | Work | Cost |
| --- | --- | --- | --- | --- | --- | --- | --- | --- | --- | --- | --- |
| 25 | 1.5.7 | **Restrictii** | 4d | 2024-07-26 | 2024-07-31 | 22 | 96d | 0d |  | 32h | 384 |
| 26 | 1.5.7.1 | Definirea restrictiilor de integritate | 2d | 2024-07-26 | 2024-07-29 |  | 96d | 0d | Mihai Popa | 16h | 192 |
| 27 | 1.5.7.2 | Implementarea restrictiilor | 2d | 2024-07-30 | 2024-07-31 | 26 | 96d |  | Mihai Popa | 16h | 192 |
| 28 | 1.5.8 | **Entitati** | 9d | 2024-08-01 | 2024-08-13 | 25 | 96d |  |  | 72h | 864 |
| 29 | 1.5.8.1 | Definirea indecsilor | 1d | 2024-08-01 | 2024-08-01 |  | 96d | 0d | Mihai Popa | 8h | 96 |
| 30 | 1.5.8.2 | Crearea indecsilor | 1d | 2024-08-02 | 2024-08-02 | 29 | 96d | 0d | Mihai Popa | 8h | 96 |
| 31 | 1.5.8.3 | Definirea functiilor | 1d | 2024-08-05 | 2024-08-05 | 30 | 96d | 0d | Mihai Popa | 8h | 96 |
| 32 | 1.5.8.4 | Crearea functiilor | 1d | 2024-08-06 | 2024-08-06 | 31 | 96d | 0d | Mihai Popa | 8h | 96 |
| 33 | 1.5.8.5 | Definirea procedurilor | 1d | 2024-08-07 | 2024-08-07 | 32 | 96d | 0d | Mihai Popa | 8h | 96 |
| 34 | 1.5.8.6 | Crearea procedurilor | 1d | 2024-08-08 | 2024-08-08 | 33 | 96d | 0d | Mihai Popa | 8h | 96 |
| 35 | 1.5.8.7 | Rafinarea entitatilor | 3d | 2024-08-09 | 2024-08-13 | 34 | 96d |  | Mihai Popa | 24h | 288 |
| 36 | 1.6 | **Proiectare aplicatie front end** | 113d | 2024-07-08 | 2024-12-11 | 15 | 0d |  |  | 1568h | 22,912 |
| 37 | 1.6.1 | Curs udemy ui design | 1d | 2024-07-08 | 2024-07-08 | 15 | 124d |  | Giovanni Rossi | 8h | 136 |
| 38 | 1.6.2 | Curs udemy UX | 1d | 2024-07-08 | 2024-07-08 | 15 | 0d |  | Elena Vasilescu | 8h | 96 |
| 39 | 1.6.3 | Brainstorming design | 4d | 2024-07-09 | 2024-07-12 | 38 | 0d |  | Alexandru Munteanu; Andrei Stoica; Elena Vasilescu; Giovanni Rossi; Radu Dumitrescu; Valentino Marino | 160h | 2,480 |
| 40 | 1.6.4 | **Mockup design** | 61d | 2024-07-15 | 2024-10-07 | 39 | 0d |  |  | 680h | 9,992 |
| 41 | 1.6.4.1 | **Client** | 39d | 2024-07-15 | 2024-09-05 |  | 0d |  |  | 560h | 8,120 |
| 42 | 1.6.4.1.1 | **Prima pagina** | 14d | 2024-07-15 | 2024-08-01 |  | 0d |  |  | 208h | 3,056 |
| 43 | 1.6.4.1.1.1 | Pagina principala | 2d | 2024-07-15 | 2024-07-16 |  | 0d |  | Elena Vasilescu; Giovanni Rossi | 32h | 464 |
| 44 | 1.6.4.1.1.2 | Pagina Sign Up | 2d | 2024-07-17 | 2024-07-18 | 43 | 0d |  | Elena Vasilescu; Giovanni Rossi | 32h | 464 |
| 45 | 1.6.4.1.1.3 | Pagina Log In | 2d | 2024-07-18 | 2024-07-22 | 44 | 0d |  | Elena Vasilescu; Giovanni Rossi | 16h | 272 |
| 46 | 1.6.4.1.1.4 | Pagina schimbare parola | 2d | 2024-07-23 | 2024-07-24 | 45 | 0d |  | Elena Vasilescu; Giovanni Rossi | 32h | 464 |
| 47 | 1.6.4.1.1.5 | Pagina parola uitata | 2d | 2024-07-25 | 2024-07-26 | 46 | 0d |  | Elena Vasilescu; Giovanni Rossi | 32h | 464 |
| 48 | 1.6.4.1.1.6 | Proiectare camp cautare | 2d | 2024-07-29 | 2024-07-30 | 47 | 0d |  | Elena Vasilescu; Giovanni Rossi | 32h | 464 |
| 49 | 1.6.4.1.1.7 | Proiectare pagina contact | 2d | 2024-07-31 | 2024-08-01 | 48 | 0d |  | Elena Vasilescu; Giovanni Rossi | 32h | 464 |

| ID | WBS | Task | Duration | Start | Finish | Predecessors | Total slack | Resources | Work | Cost |
| --- | --- | --- | --- | --- | --- | --- | --- | --- | --- | --- |
| 50 | 1.6.4.1.2 | **Others** | 8d | 2024-08-02 | 2024-08-13 | 42 | 0d |  | 128h | 1,856 |
| 51 | 1.6.4.1.2.1 | Proiectare pagina ghid utilizare | 2d | 2024-08-02 | 2024-08-05 |  | 0d | Elena Vasilescu; Giovanni Rossi | 32h | 464 |
| 52 | 1.6.4.1.2.2 | Proiectare pagina FAQ | 2d | 2024-08-06 | 2024-08-07 | 51 | 0d | Elena Vasilescu; Giovanni Rossi | 32h | 464 |
| 53 | 1.6.4.1.2.3 | Pagina sugestii si reclamatii | 2d | 2024-08-08 | 2024-08-09 | 52 | 0d | Elena Vasilescu; Giovanni Rossi | 32h | 464 |
| 54 | 1.6.4.1.2.4 | Proiectare social media | 2d | 2024-08-12 | 2024-08-13 | 53 | 0d | Elena Vasilescu; Giovanni Rossi | 32h | 464 |
| 55 | 1.6.4.1.3 | **Masini** | 7d | 2024-08-14 | 2024-08-22 | 50 | 0d |  | 80h | 1,160 |
| 56 | 1.6.4.1.3.1 | Pagina categorii masini | 2d | 2024-08-14 | 2024-08-16 |  | 0d | Elena Vasilescu; Giovanni Rossi | 16h | 232 |
| 57 | 1.6.4.1.3.2 | Design filtrare cautare | 2d | 2024-08-19 | 2024-08-20 | 56 | 0d | Elena Vasilescu; Giovanni Rossi | 32h | 464 |
| 58 | 1.6.4.1.3.3 | Ordonare cautare | 2d | 2024-08-21 | 2024-08-22 | 57 | 0d | Elena Vasilescu; Giovanni Rossi | 32h | 464 |
| 59 | 1.6.4.1.4 | **Cautare** | 8d | 2024-08-22 | 2024-09-03 | 55 | 0d |  | 112h | 1,584 |
| 60 | 1.6.4.1.4.1 | Pagina masini cautate | 2d | 2024-08-22 | 2024-08-26 |  | 0d | Elena Vasilescu; Giovanni Rossi | 16h | 192 |
| 61 | 1.6.4.1.4.2 | Design filtrare cautare | 2d | 2024-08-27 | 2024-08-28 | 60 | 0d | Elena Vasilescu; Giovanni Rossi | 32h | 464 |
| 62 | 1.6.4.1.4.3 | Ordonare cautare | 2d | 2024-08-29 | 2024-08-30 | 61 | 0d | Elena Vasilescu; Giovanni Rossi | 32h | 464 |
| 63 | 1.6.4.1.4.4 | Proiectare carduri pentru masini gasite | 2d | 2024-09-02 | 2024-09-03 | 62 | 0d | Elena Vasilescu; Giovanni Rossi | 32h | 464 |
| 64 | 1.6.4.1.5 | **Pagina masina** | 2d | 2024-09-04 | 2024-09-05 | 59 | 0d |  | 32h | 464 |
| 65 | 1.6.4.1.5.1 | Detalii masina | 1d | 2024-09-04 | 2024-09-04 |  | 0d | Elena Vasilescu; Giovanni Rossi | 16h | 232 |
| 66 | 1.6.4.1.5.2 | Lista masini | 1d | 2024-09-05 | 2024-09-05 | 65 | 0d | Elena Vasilescu; Giovanni Rossi | 16h | 232 |
| 67 | 1.6.4.2 | **Administrare** | 10d | 2024-09-06 | 2024-09-19 | 41 | 0d |  | 88h | 1,456 |
| 68 | 1.6.4.2.1 | **Pagina principala** | 10d | 2024-09-06 | 2024-09-19 |  | 0d |  | 88h | 1,456 |
| 69 | 1.6.4.2.1.1 | Grafice masini populare | 2d | 2024-09-06 | 2024-09-09 |  | 0d | Elena Vasilescu; Giovanni Rossi | 24h | 368 |
| 70 | 1.6.4.2.1.2 | Adaugare masina | 2d | 2024-09-09 | 2024-09-11 | 69 | 0d | Elena Vasilescu; Giovanni Rossi | 16h | 272 |
| 71 | 1.6.4.2.1.3 | Stergere masina | 2d | 2024-09-11 | 2024-09-13 | 70 | 0d | Elena Vasilescu; Giovanni Rossi | 16h | 272 |
| 72 | 1.6.4.2.1.4 | Modificare informatii masina | 2d | 2024-09-13 | 2024-09-17 | 71 | 0d | Elena Vasilescu; Giovanni Rossi | 16h | 272 |
| 73 | 1.6.4.2.1.5 | Vizualizare sugestii si reclamatii | 2d | 2024-09-17 | 2024-09-19 | 72 | 0d | Elena Vasilescu; Giovanni Rossi | 16h | 272 |

| ID | WBS | Task | Duration | Start | Finish | Predecessors | Total slack | Resources | Work | Cost |
| --- | --- | --- | --- | --- | --- | --- | --- | --- | --- | --- |
| 74 | 1.6.4.3 | **Feedback client** | 2d | 2024-09-20 | 2024-09-23 | 67 | 0d |  | 32h | 416 |
| 75 | 1.6.4.3.1 | Prezentare stagiu mockup design | 1d | 2024-09-20 | 2024-09-20 |  | 0d | Ana Stanescu; Doana Bogdan | 16h | 208 |
| 76 | 1.6.4.3.2 | Feedback stagiu design | 1d | 2024-09-23 | 2024-09-23 | 75 | 0d | Ana Stanescu; Doana Bogdan | 16h | 208 |
| 77 | 1.6.4.4 | **Activitati deplasari** | 10d | 2024-09-24 | 2024-10-07 | 74 | 0d |  |  |  |
| 78 | 1.6.4.4.1 | RO-IT | 5d | 2024-09-24 | 2024-09-30 |  | 0d |  |  |  |
| 79 | 1.6.4.4.2 | IT-RO | 5d | 2024-10-01 | 2024-10-07 | 78 | 0d |  |  |  |
| 80 | 1.6.5 | **Front End** | 47d | 2024-10-08 | 2024-12-11 | 40 | 0d |  | 712h | 10,208 |
| 81 | 1.6.5.1 | Curs udemy bootsrap | 1d | 2024-10-08 | 2024-10-08 |  | 0d | Alexandru Munteanu | 8h | 96 |
| 82 | 1.6.5.2 | Curs udemy react | 1d | 2024-10-09 | 2024-10-09 | 81 | 0d | Valentino Marino | 8h | 136 |
| 83 | 1.6.5.3 | **Client** | 35d | 2024-10-10 | 2024-11-27 | 82 | 0d |  | 536h | 7,656 |
| 84 | 1.6.5.3.1 | **Prima pagina** | 14d | 2024-10-10 | 2024-10-29 |  | 0d |  | 208h | 3,016 |
| 85 | 1.6.5.3.1.1 | Pagina principala | 2d | 2024-10-10 | 2024-10-11 |  | 0d | Valentino Marino; Alexandru Munteanu | 32h | 464 |
| 86 | 1.6.5.3.1.2 | Pagina Sign Up | 2d | 2024-10-14 | 2024-10-15 | 85 | 0d | Alexandru Munteanu; Valentino Marino | 32h | 464 |
| 87 | 1.6.5.3.1.3 | Pagina Log In | 2d | 2024-10-16 | 2024-10-17 | 86 | 0d | Valentino Marino; Alexandru Munteanu | 32h | 464 |
| 88 | 1.6.5.3.1.4 | Pagina schimbare parola | 2d | 2024-10-18 | 2024-10-21 | 87 | 0d | Alexandru Munteanu; Valentino Marino | 32h | 464 |
| 89 | 1.6.5.3.1.5 | Pagina parola uitata | 2d | 2024-10-22 | 2024-10-23 | 88 | 0d | Valentino Marino; Alexandru Munteanu | 32h | 464 |
| 90 | 1.6.5.3.1.6 | Proiectare camp cautare | 2d | 2024-10-24 | 2024-10-25 | 89 | 0d | Alexandru Munteanu; Valentino Marino | 32h | 464 |
| 91 | 1.6.5.3.1.7 | Proiectare pagina contact | 2d | 2024-10-28 | 2024-10-29 | 90 | 0d | Alexandru Munteanu; Valentino Marino | 16h | 232 |
| 92 | 1.6.5.3.2 | **Others** | 7d | 2024-10-30 | 2024-11-07 | 84 | 0d |  | 104h | 1,488 |
| 93 | 1.6.5.3.2.1 | Proiectare pagina ghid utilizare | 1d | 2024-10-30 | 2024-10-30 |  | 0d | Alexandru Munteanu; Valentino Marino | 16h | 232 |
| 94 | 1.6.5.3.2.2 | Proiectare pagina FAQ | 1d | 2024-10-31 | 2024-10-31 | 93 | 0d | Alexandru Munteanu; Valentino Marino | 16h | 232 |
| 95 | 1.6.5.3.2.3 | Proiectare pagina masini | 1d | 2024-10-31 | 2024-11-01 | 94 | 0d | Alexandru Munteanu; Valentino Marino | 8h | 96 |
| 96 | 1.6.5.3.2.4 | Pagina sugestii si reclamatii | 2d | 2024-11-04 | 2024-11-05 | 95 | 0d | Alexandru Munteanu; Valentino Marino | 32h | 464 |
| 97 | 1.6.5.3.2.5 | Proiectare social media | 2d | 2024-11-06 | 2024-11-07 | 96 | 0d | Alexandru Munteanu; Valentino Marino | 32h | 464 |

| ID | WBS | Task | Duration | Start | Finish | Predecessors | Total slack | Free slack | Resources | Work | Cost |
| --- | --- | --- | --- | --- | --- | --- | --- | --- | --- | --- | --- |
| 98 | 1.6.5.3.3 | **Masini** | 2d | 2024-11-08 | 2024-11-11 | 92 | 0d |  |  | 32h | 464 |
| 99 | 1.6.5.3.3.1 | Pagina categorii masini | 1d | 2024-11-08 | 2024-11-08 |  | 0d |  | Alexandru Munteanu; Valentino Marino | 16h | 232 |
| 100 | 1.6.5.3.3.2 | Pagina masini populare | 1d | 2024-11-11 | 2024-11-11 | 99 | 0d |  | Alexandru Munteanu; Valentino Marino | 16h | 232 |
| 101 | 1.6.5.3.4 | **Cautare** | 5d | 2024-11-12 | 2024-11-18 | 98 | 0d |  |  | 80h | 1,160 |
| 102 | 1.6.5.3.4.1 | Pagina masini cautate | 1d | 2024-11-12 | 2024-11-12 |  | 0d |  | Valentino Marino; Alexandru Munteanu | 16h | 232 |
| 103 | 1.6.5.3.4.2 | Filtrare cautare | 1d | 2024-11-13 | 2024-11-13 | 102 | 0d |  | Alexandru Munteanu; Valentino Marino | 16h | 232 |
| 104 | 1.6.5.3.4.3 | Ordonare cautare | 1d | 2024-11-14 | 2024-11-14 | 103 | 0d |  | Alexandru Munteanu; Valentino Marino | 16h | 232 |
| 105 | 1.6.5.3.4.4 | Proiectare card-uri masini gasite | 1d | 2024-11-15 | 2024-11-15 | 104 | 0d |  | Alexandru Munteanu; Valentino Marino | 16h | 232 |
| 106 | 1.6.5.3.4.5 | Pagina masina inexistenta | 1d | 2024-11-18 | 2024-11-18 | 105 | 0d |  | Alexandru Munteanu; Valentino Marino | 16h | 232 |
| 107 | 1.6.5.3.5 | **Feedback client** | 4d | 2024-11-19 | 2024-11-22 | 101 | 0d |  |  | 64h | 832 |
| 108 | 1.6.5.3.5.1 | Prezentare pagina prototip | 2d | 2024-11-19 | 2024-11-20 |  | 0d |  | Ana Stanescu; Doana Bogdan | 32h | 416 |
| 109 | 1.6.5.3.5.2 | Feedback stagiu curent | 2d | 2024-11-21 | 2024-11-22 | 108 | 0d |  | Doana Bogdan; Ana Stanescu | 32h | 416 |
| 110 | 1.6.5.3.6 | **Pagina masina** | 3d | 2024-11-25 | 2024-11-27 | 107 | 0d |  |  | 48h | 696 |
| 111 | 1.6.5.3.6.1 | Detalii masina | 1d | 2024-11-25 | 2024-11-25 |  | 0d |  | Alexandru Munteanu; Valentino Marino | 16h | 232 |
| 112 | 1.6.5.3.6.2 | Lista masini | 1d | 2024-11-26 | 2024-11-26 | 111 | 0d |  | Alexandru Munteanu; Valentino Marino | 16h | 232 |
| 113 | 1.6.5.3.6.3 | Review-uri masini | 1d | 2024-11-27 | 2024-11-27 | 112 | 0d |  | Valentino Marino; Alexandru Munteanu | 16h | 232 |
| 114 | 1.6.5.4 | **Administrare** | 10d | 2024-11-28 | 2024-12-11 | 83 | 0d |  |  | 160h | 2,320 |
| 115 | 1.6.5.4.1 | **Pagina principala** | 10d | 2024-11-28 | 2024-12-11 |  | 0d |  |  | 160h | 2,320 |
| 116 | 1.6.5.4.1.1 | Grafice masini populare | 2d | 2024-11-28 | 2024-11-29 |  | 0d |  | Alexandru Munteanu; Valentino Marino | 32h | 464 |
| 117 | 1.6.5.4.1.2 | Adaugare masini | 2d | 2024-12-02 | 2024-12-03 | 116 | 0d |  | Alexandru Munteanu; Valentino Marino | 32h | 464 |
| 118 | 1.6.5.4.1.3 | Stergere masini | 2d | 2024-12-04 | 2024-12-05 | 117 | 0d |  | Alexandru Munteanu; Valentino Marino | 32h | 464 |
| 119 | 1.6.5.4.1.4 | Modificare masini | 2d | 2024-12-06 | 2024-12-09 | 118 | 0d |  | Alexandru Munteanu; Valentino Marino | 32h | 464 |
| 120 | 1.6.5.4.1.5 | Vizualizare sugestii si reclamatii | 2d | 2024-12-10 | 2024-12-11 | 119 | 0d |  | Alexandru Munteanu; Valentino Marino | 32h | 464 |
| 121 | 1.7 | **Proiectare aplicatie back end + testare** | 58d | 2024-07-08 | 2024-09-25 | 15 | 35d |  |  | 952h | 14,976 |
| 122 | 1.7.1 | Curs udemy php | 1d | 2024-07-08 | 2024-07-08 | 15, 120 | 35d | 0d | Cristina Radu | 8h | 96 |
| 123 | 1.7.2 | Curs udemy Oracle SQL | 1d | 2024-07-09 | 2024-07-09 | 122, 120 | 35d | 3d | Chiara Russo | 8h | 136 |
| 124 | 1.7.3 | Curs back end | 1d | 2024-07-15 | 2024-07-15 | 123, 120 | 32d | 0d | James Smith | 8h | 152 |
| 125 | 1.7.4 | Curs testing | 1d | 2024-07-16 | 2024-07-16 | 124, 120 | 32d | 0d | Maria Ionescu | 8h | 96 |

| ID | WBS | Task | Duration | Start | Finish | Predecessors | Total slack | Free slack | Resources | Work | Cost |
| --- | --- | --- | --- | --- | --- | --- | --- | --- | --- | --- | --- |
| 126 | 1.7.5 | **Client** | 51d | 2024-07-17 | 2024-09-25 | 125 | 32d |  |  | 920h | 14,496 |
| 127 | 1.7.5.1 | **Prima pagina** | 19d | 2024-07-17 | 2024-08-12 |  | 32d | 0d |  | 392h | 6,184 |
| 128 | 1.7.5.1.1 | Functionalitate pagina principala | 2d | 2024-07-17 | 2024-07-18 |  | 32d | 0d | Chiara Russo; Cristina Radu | 32h | 464 |
| 129 | 1.7.5.1.2 | Functionalitate Sign Up | 2d | 2024-07-19 | 2024-07-22 | 128 | 32d | 0d | Chiara Russo; Cristina Radu; James Smith | 48h | 768 |
| 130 | 1.7.5.1.3 | Functionalitate Log In | 2d | 2024-07-23 | 2024-07-24 | 129 | 32d | 0d | Andrei Stoica; Chiara Russo; Cristina Radu; James Smith | 64h | 1,040 |
| 131 | 1.7.5.1.4 | Functionalitate schimbare parola | 2d | 2024-07-24 | 2024-07-26 | 130 | 36d | 0d | Chiara Russo; Cristina Radu; James Smith | 32h | 496 |
| 132 | 1.7.5.1.5 | Functionalitate parola uitata | 2d | 2024-07-26 | 2024-07-30 | 131 | 36d | 0d | Chiara Russo; Cristina Radu; James Smith; Radu Dumitrescu | 48h | 768 |
| 133 | 1.7.5.1.6 | Functionalitate camp cautare | 2d | 2024-07-30 | 2024-08-01 | 132 | 36d | 0d | Chiara Russo; Cristina Radu; James Smith; Radu Dumitrescu | 40h | 616 |
| 134 | 1.7.5.1.7 | Functionalitate pagina contact | 2d | 2024-08-01 | 2024-08-05 | 133 | 46d | 0d | Andrei Stoica; Chiara Russo; Cristina Radu; James Smith; Radu Dumitrescu | 64h | 1,040 |
| 135 | 1.7.5.1.8 | Integrare reclame AdSense | 2d | 2024-08-05 | 2024-08-07 | 134 | 46d | 0d | Chiara Russo; Cristina Radu; James Smith | 24h | 400 |
| 136 | 1.7.5.1.9 | Testare generala prima pagina | 3d | 2024-08-08 | 2024-08-12 | 135 | 46d |  | Samuel Wilson; Maria Ionescu | 40h | 592 |
| 137 | 1.7.5.2 | **Others** | 9d | 2024-08-13 | 2024-08-23 | 127 | 54d | 0d |  | 184h | 2,960 |
| 138 | 1.7.5.2.1 | Functionalitate ghid utilizare | 1d | 2024-08-13 | 2024-08-13 |  | 56d | 0d | Chiara Russo; Cristina Radu; James Smith; Radu Dumitrescu | 32h | 520 |
| 139 | 1.7.5.2.2 | Functionalitate FAQ | 1d | 2024-08-14 | 2024-08-14 | 138 | 56d | 0d | Andrei Stoica; Chiara Russo; Cristina Radu; James Smith | 32h | 520 |
| 140 | 1.7.5.2.3 | Functionalitate sugestii si reclamatii | 2d | 2024-08-15 | 2024-08-19 | 139 | 54d | 0d | Andrei Stoica; Cristina Radu; James Smith | 24h | 384 |
| 141 | 1.7.5.2.4 | Functionalitate social media | 2d | 2024-08-20 | 2024-08-21 | 140 | 54d | 0d | Andrei Stoica; Chiara Russo; Cristina Radu; James Smith | 64h | 1,040 |
| 142 | 1.7.5.2.5 | Testare generala others | 2d | 2024-08-22 | 2024-08-23 | 141 | 54d |  | Samuel Wilson; Maria Ionescu | 32h | 496 |
| 143 | 1.7.5.3 | **Plati** | 7d | 2024-08-26 | 2024-09-03 | 137 | 54d | 0d |  | 56h | 872 |
| 144 | 1.7.5.3.1 | Google play | 1d | 2024-08-26 | 2024-08-26 |  | 54d | 0d | Marco Moretti | 8h | 136 |
| 145 | 1.7.5.3.2 | Testare plata Google Pay | 1d | 2024-08-27 | 2024-08-27 | 144 | 54d | 0d | Maria Ionescu | 8h | 96 |
| 146 | 1.7.5.3.3 | Apple Pay | 1d | 2024-08-28 | 2024-08-28 | 145 | 54d | 0d | Marco Moretti | 8h | 136 |
| 147 | 1.7.5.3.4 | Testare plata Apple Pay | 1d | 2024-08-29 | 2024-08-29 | 146 | 54d | 0d | Maria Ionescu | 8h | 96 |
| 148 | 1.7.5.3.5 | Card | 1d | 2024-08-30 | 2024-08-30 | 147 | 54d | 0d | Marco Moretti | 8h | 136 |
| 149 | 1.7.5.3.6 | Validare plata | 2d | 2024-09-02 | 2024-09-03 | 148 | 54d |  | Marco Moretti | 16h | 272 |

| ID | WBS | Task | Duration | Start | Finish | Predecessors | Total slack | Free slack | Resources | Work | Cost |
| --- | --- | --- | --- | --- | --- | --- | --- | --- | --- | --- | --- |
| 150 | 1.7.5.4 | **Masini** | 4d | 2024-09-04 | 2024-09-09 | 143 | 54d | 0d |  | 88h | 1,400 |
| 151 | 1.7.5.4.1 | Categorii masini | 1d | 2024-09-04 | 2024-09-04 |  | 54d | 0d | Andrei Stoica; Chiara Russo; Cristina Radu; James Smith | 32h | 520 |
| 152 | 1.7.5.4.2 | Masini populare | 1d | 2024-09-05 | 2024-09-05 | 151 | 54d | 0d | Chiara Russo; Cristina Radu; James Smith | 24h | 384 |
| 153 | 1.7.5.4.3 | Testare generala masini | 2d | 2024-09-06 | 2024-09-09 | 152 | 54d |  | Samuel Wilson; Maria Ionescu | 32h | 496 |
| 154 | 1.7.5.5 | **Cautare** | 4d | 2024-09-10 | 2024-09-13 | 150 | 58d | 0d |  | 64h | 1,016 |
| 155 | 1.7.5.5.1 | Pagina masini cautate | 1d | 2024-09-10 | 2024-09-10 |  | 58d | 0d | Chiara Russo; Cristina Radu | 16h | 232 |
| 156 | 1.7.5.5.2 | Filtrare masini | 1d | 2024-09-11 | 2024-09-11 | 155 | 65d | 0d | Chiara Russo; James Smith | 16h | 288 |
| 157 | 1.7.5.5.3 | Testare generala cautare | 2d | 2024-09-12 | 2024-09-13 | 156 | 65d |  | Samuel Wilson; Maria Ionescu | 32h | 496 |
| 158 | 1.7.5.6 | **Feedback client** | 2d | 2024-09-16 | 2024-09-17 | 154 | 65d | 0d |  | 32h | 416 |
| 159 | 1.7.5.6.1 | Prezentare stagiu pagina | 1d | 2024-09-16 | 2024-09-16 |  | 65d | 0d | Ana Stanescu; Doana Bogdan | 16h | 208 |
| 160 | 1.7.5.6.2 | Feedback stagiu pagina | 1d | 2024-09-17 | 2024-09-17 | 159 | 65d |  | Ana Stanescu; Doana Bogdan | 16h | 208 |
| 161 | 1.7.5.7 | **Pagina masina** | 6d | 2024-09-18 | 2024-09-25 | 158 | 65d |  |  | 104h | 1,648 |
| 162 | 1.7.5.7.1 | Detalii masina | 1d | 2024-09-18 | 2024-09-18 |  | 65d | 0d | Chiara Russo; Cristina Radu; James Smith | 24h | 384 |
| 163 | 1.7.5.7.2 | Recomandarea noastra | 1d | 2024-09-19 | 2024-09-19 | 162 | 65d | 0d | James Smith | 8h | 152 |
| 164 | 1.7.5.7.3 | Activare notificare alerta oferta | 1d | 2024-09-20 | 2024-09-20 | 163 | 65d | 0d | Chiara Russo; Cristina Radu | 16h | 232 |
| 165 | 1.7.5.7.4 | Lista masini | 1d | 2024-09-23 | 2024-09-23 | 164 | 65d | 0d | Chiara Russo; Cristina Radu; James Smith | 24h | 384 |
| 166 | 1.7.5.7.5 | Informatii aditionale masini | 1d | 2024-09-24 | 2024-09-24 | 165 | 65d | 0d | Cristina Radu; James Smith | 16h | 248 |
| 167 | 1.7.5.7.6 | Testare generala pagina masini | 1d | 2024-09-25 | 2024-09-25 | 166 | 67d |  | Samuel Wilson; Maria Ionescu | 16h | 248 |
| 168 | 1.8 | **Imbunatatiri si bug fix-uri** | 12d | 2024-12-12 | 2024-12-27 | 120 | 0d |  |  | 112h | 1,704 |
| 169 | 1.8.1 | Imbunatatire design | 3d | 2024-12-12 | 2024-12-16 |  | 0d |  | Giovanni Rossi | 24h | 408 |
| 170 | 1.8.2 | Imbunatatire UX | 3d | 2024-12-17 | 2024-12-19 | 169 | 0d |  | Elena Vasilescu | 24h | 288 |
| 171 | 1.8.3 | Schimbare tema culoare | 2d | 2024-12-20 | 2024-12-23 | 170 | 0d |  | Valentino Marino | 16h | 272 |
| 172 | 1.8.4 | Imbunatatiri front end | 2d | 2024-12-24 | 2024-12-27 | 171 | 0d |  | Alexandru Munteanu; Andrei Stoica; Radu Dumitrescu | 48h | 736 |
